# HYSKJF_项目进度计划

Schedule from MS Project, 2018-07-18 to 2018-08-23, status date 2018-08-05, costs in ¥, A marks actual dates.
Microsoft

## Calendars

- 标准: Mon-Fri 08:00-12:00, 13:00-17:00; Sat-Sun off.

## Resources

| Resource | Rate |
| --- | --- |
| 廖志荣 | 40 |
| 李宪恩 | 35 |
| 卢浩键 | 40 |
| 陈健豪 | 35 |
| 岑梓荣 | 35 |
| 黄景祥 | 40 |
| 郑俊森 | 34 |
| 蓝向奔 | 34 |
| 黎恩恒 | 34 |
| 江龙杰 | 34 |
| 吕浩泰 | 48 |
| 陈树沛 | 34 |
| 陈凯平 | 42 |
| 张丹萍 | 41 |
| 吴梓铭 | 33 |

## Schedule

| ID | WBS | Task | Type | Duration | Start | Finish | Predecessors | Complete | Remaining | Actual finish | Baseline start | Baseline finish | Baseline duration | Baseline 1 start | Baseline 1 finish | Constraint | Resources | Work | Actual work | Cost | Baseline cost | Actual cost |
| --- | --- | --- | --- | --- | --- | --- | --- | --- | --- | --- | --- | --- | --- | --- | --- | --- | --- | --- | --- | --- | --- | --- |
| 1 | 1 | **会员刷卡积分系统** |  | 27d | 2018-07-18 A | 2018-08-23 |  | 59% | 11.12d |  | 2018-07-18 | 2018-08-23 | 27d | 2018-07-18 | 2018-08-23 |  |  | 445.8h | 261.12h | 16,153.14 | 18,589 | 9,034.68 |
| 2 | 1.1 | **先启阶段** |  | 8d | 2018-07-18 A | 2018-07-27 |  | 100% |  | 2018-07-30 | 2018-07-18 | 2018-07-27 | 8d | 2018-07-18 | 2018-07-27 |  |  | 118.8h | 118.8h | 4,035 | 3,785 | 4,035 |
| 3 | 1.1.1 | **项目管理** |  | 3d | 2018-07-18 A | 2018-07-20 A |  | 100% |  |  | 2018-07-18 | 2018-07-20 | 3d | 2018-07-18 | 2018-07-20 |  |  | 10h | 10h | 385 | 385 | 385 |
| 4 | 1.1.1.1 | 立项 | manual | 1d | 2018-07-18 A | 2018-07-18 A |  | 100% |  |  | 2018-07-18 | 2018-07-18 | 1d | 2018-07-18 | 2018-07-18 |  |  |  |  |  |  |  |
| 5 | 1.1.1.2 | 制定项目进度计划 | manual | 1d | 2018-07-18 A | 2018-07-18 A | 4 | 100% |  |  | 2018-07-18 | 2018-07-18 | 1d | 2018-07-18 | 2018-07-18 |  | 廖志荣 [30%] | 2h | 2h | 80 | 80 | 80 |
| 6 | 1.1.1.3 | 制定项目开发计划 | manual | 1d | 2018-07-18 A | 2018-07-18 A | 4 | 100% |  |  | 2018-07-18 | 2018-07-18 | 1d | 2018-07-18 | 2018-07-18 |  | 廖志荣 [40%] | 2h | 2h | 80 | 80 | 80 |
| 7 | 1.1.1.4 | 风险管理 | manual | 1d | 2018-07-18 A | 2018-07-18 A | 4 | 100% |  |  | 2018-07-18 | 2018-07-18 | 1d | 2018-07-18 | 2018-07-18 |  | 廖志荣 [30%] | 1h | 1h | 40 | 40 | 40 |
| 8 | 1.1.1.5 | 同行评审 | manual | 2d | 2018-07-19 A | 2018-07-20 A | 5, 6 | 100% |  |  | 2018-07-19 | 2018-07-20 | 2d | 2018-07-19 | 2018-07-20 | start no earlier than 2018-07-19 | 岑梓荣 [10%]; 陈健豪 [10%]; 李宪恩 [10%]; 廖志荣 [10%]; 卢浩键 [10%] | 5h | 5h | 185 | 185 | 185 |
| 9 | 1.1.2 | **配置管理** |  | 2d | 2018-07-18 A | 2018-07-19 A | 4 | 100% |  |  | 2018-07-18 | 2018-07-19 | 2d | 2018-07-18 | 2018-07-19 |  |  | 4h | 4h | 140 | 140 | 140 |
| 10 | 1.1.2.1 | 制定配置计划 | manual | 2d | 2018-07-18 A | 2018-07-19 A | 4 | 100% |  |  | 2018-07-18 | 2018-07-19 | 2d | 2018-07-18 | 2018-07-19 |  | 李宪恩 [40%] | 2h | 2h | 70 | 70 | 70 |
| 11 | 1.1.2.2 | 搭建配置环境 | manual | 2d | 2018-07-18 A | 2018-07-19 A | 10 | 100% |  |  | 2018-07-18 | 2018-07-19 | 2d | 2018-07-18 | 2018-07-19 |  | 李宪恩 [50%] | 2h | 2h | 70 | 70 | 70 |
| 12 | 1.1.3 | **需求开发** |  | 4d | 2018-07-19 A | 2018-07-24 A | 9 | 100% |  |  | 2018-07-19 | 2018-07-24 | 4d | 2018-07-19 | 2018-07-24 |  |  | 86h | 86h | 2,900 | 2,900 | 2,900 |
| 13 | 1.1.3.1 | 设计界面原型 | manual | 4d | 2018-07-19 A | 2018-07-24 A | 4 | 100% |  |  | 2018-07-19 | 2018-07-24 | 4d | 2018-07-19 | 2018-07-24 |  | 陈健豪 [70%] | 22h | 22h | 660 | 660 | 660 |
| 14 | 1.1.3.2 | 用例建模 | manual | 4d | 2018-07-19 A | 2018-07-24 A | 4 | 100% |  |  | 2018-07-19 | 2018-07-24 | 4d | 2018-07-19 | 2018-07-24 |  | 岑梓荣 [20%]; 陈健豪 [20%]; 李宪恩 [20%]; 廖志荣 [20%]; 卢浩键 [20%] | 32h | 32h | 1,120 | 1,120 | 1,120 |
| 15 | 1.1.3.3 | 用例阐述 | manual | 4d | 2018-07-19 A | 2018-07-24 A | 4 | 100% |  |  | 2018-07-19 | 2018-07-24 | 4d | 2018-07-19 | 2018-07-24 |  | 岑梓荣 [20%]; 陈健豪 [20%]; 李宪恩 [20%]; 廖志荣 [20%]; 卢浩键 [20%] | 32h | 32h | 1,120 | 1,120 | 1,120 |
| 16 | 1.1.4 | **测试计划** |  | 3d | 2018-07-24 A | 2018-07-26 |  | 100% |  | 2018-07-27 | 2018-07-24 | 2018-07-26 | 3d | 2018-07-24 | 2018-07-26 |  |  | 12h | 12h | 360 | 360 | 360 |
| 17 | 1.1.4.1 | 制定测试计划 | manual | 1d | 2018-07-24 A | 2018-07-24 A | 12 | 100% |  |  | 2018-07-24 | 2018-07-24 | 1d | 2018-07-24 | 2018-07-24 |  | 岑梓荣 [50%] | 4h | 4h | 120 | 120 | 120 |
| 18 | 1.1.4.2 | 系统测试用例设计 | manual | 2d | 2018-07-25 A | 2018-07-27 A | 17 | 100% |  |  | 2018-07-25 | 2018-07-26 | 2d | 2018-07-25 | 2018-07-27 |  | 岑梓荣 [50%] | 8h | 8h | 240 | 240 | 240 |
| 19 | 1.1.5 | **阶段评审** |  | 1d | 2018-07-27 A | 2018-07-27 |  | 100% |  | 2018-07-30 | 2018-07-27 | 2018-07-27 | 1d | 2018-07-27 | 2018-07-27 |  |  | 6.8h | 6.8h | 250 |  | 250 |
| 20 | 1.1.5.1 | 先启配置状态审计 | manual | 1d | 2018-07-30 A | 2018-07-30 A |  | 100% |  |  | 2018-07-27 | 2018-07-27 | 1d | 2018-07-30 | 2018-07-30 |  | 李宪恩 [20%] | 1.6h | 1.6h | 56 |  | 56 |
| 21 | 1.1.5.2 | **<先启阶段里程碑>** |  | 1d | 2018-07-27 A | 2018-07-27 |  | 100% |  | 2018-07-30 | 2018-07-27 | 2018-07-27 | 1d | 2018-07-27 | 2018-07-27 |  |  | 5.2h | 5.2h | 194 |  | 194 |
| 22 | 1.1.5.2.1 | 评审需求工件 | manual | 1d | 2018-07-27 A | 2018-07-28 A | 18 | 100% |  |  | 2018-07-27 | 2018-07-27 | 1d | 2018-07-27 | 2018-07-28 |  | 岑梓荣 [20%]; 陈健豪 [20%]; 李宪恩 [20%]; 廖志荣 [20%]; 卢浩键 [20%] | 3.6h | 3.6h | 138 |  | 138 |
| 23 | 1.1.5.2.2 | 发布需求基线 | manual | 1d | 2018-07-30 A | 2018-07-30 A | 22 | 100% |  |  | 2018-07-27 | 2018-07-27 | 1d | 2018-07-30 | 2018-07-30 |  | 李宪恩 [20%] | 1.6h | 1.6h | 56 |  | 56 |
| 24 | 1.2 | **精化阶段** |  | 6d | 2018-07-30 A | 2018-08-05 A | 2 | 100% |  |  | 2018-07-30 | 2018-08-05 | 6d | 2018-07-30 | 2018-08-05 |  | 黄景祥 [25%]; 江龙杰 [25%]; 蓝向奔 [25%]; 黎恩恒 [25%]; 郑俊森 [25%] | 142.32h | 142.32h | 4,999.68 | 6,316 | 4,999.68 |
| 25 | 1.2.1 | 系统构架设计 | manual | 1d | 2018-07-30 A | 2018-07-30 A |  | 100% |  |  |  |  |  | 2018-07-30 | 2018-07-30 |  | 黄景祥 [12%] | 0.96h | 0.96h | 38.4 |  | 38.4 |
| 26 | 1.2.2 | 设计模型 | manual | 2d | 2018-07-30 A | 2018-07-31 A |  | 100% |  |  | 2018-07-30 | 2018-08-02 | 4d | 2018-07-30 | 2018-07-31 |  | 黄景祥 [12%]; 江龙杰 [25%]; 蓝向奔 [25%]; 黎恩恒 [25%]; 郑俊森 [25%] | 17.92h | 17.92h | 620.8 | 2,576 | 620.8 |
| 27 | 1.2.3 | 数据库建模与数据库设计 | manual | 1d | 2018-08-01 A | 2018-08-01 A |  | 100% |  |  | 2018-07-30 | 2018-08-02 | 4d | 2018-08-01 | 2018-08-01 |  | 黎恩恒 [12%] | 0.96h | 0.96h | 32.64 | 2,464 | 32.64 |
| 28 | 1.2.4 | 集成测试用例设计 | manual | 1d | 2018-08-01 A | 2018-08-02 A |  | 100% |  |  | 2018-07-30 | 2018-08-15 | 13d | 2018-08-01 | 2018-08-02 |  | 黄景祥 [25%]; 江龙杰 [25%]; 蓝向奔 [25%]; 黎恩恒 [12%]; 郑俊森 [25%] | 8.96h | 8.96h | 316.64 | 1,248 | 316.64 |

| ID | WBS | Task | Type | Duration | Start | Finish | Predecessors | Complete | Baseline start | Baseline finish | Baseline duration | Baseline 1 start | Baseline 1 finish | Resources | Work | Actual work | Cost | Baseline cost | Actual cost |
| --- | --- | --- | --- | --- | --- | --- | --- | --- | --- | --- | --- | --- | --- | --- | --- | --- | --- | --- | --- |
| 29 | 1.2.5 | **同行评审** |  | 1d | 2018-08-03 A | 2018-08-03 A |  | 100% |  |  |  | 2018-08-03 | 2018-08-03 | 黄景祥 [25%]; 江龙杰 [25%]; 蓝向奔 [25%]; 黎恩恒 [25%]; 郑俊森 [25%] | 19.6h | 19.6h | 689.92 |  | 689.92 |
| 30 | 1.2.5.1 | 系统构架设计评审 | manual | 1d | 2018-08-03 A | 2018-08-03 A |  | 100% |  |  |  | 2018-08-03 | 2018-08-03 | 黄景祥 [6%]; 江龙杰 [6%]; 蓝向奔 [6%]; 黎恩恒 [6%]; 郑俊森 [6%] | 2.4h | 2.4h | 84.48 |  | 84.48 |
| 31 | 1.2.5.2 | 设计模型评审 | manual | 1d | 2018-08-03 A | 2018-08-03 A |  | 100% |  |  |  | 2018-08-03 | 2018-08-03 | 黄景祥 [6%]; 江龙杰 [6%]; 蓝向奔 [6%]; 黎恩恒 [6%]; 郑俊森 [6%] | 2.4h | 2.4h | 84.48 |  | 84.48 |
| 32 | 1.2.5.3 | 数据库模型评审 | manual | 1d | 2018-08-03 A | 2018-08-03 A |  | 100% |  |  |  | 2018-08-03 | 2018-08-03 | 黄景祥 [6%]; 江龙杰 [6%]; 蓝向奔 [6%]; 黎恩恒 [6%]; 郑俊森 [6%] | 2.4h | 2.4h | 84.48 |  | 84.48 |
| 33 | 1.2.5.4 | 集成测试用例评审 | manual | 1d | 2018-08-03 A | 2018-08-03 A |  | 100% |  |  |  | 2018-08-03 | 2018-08-03 | 黄景祥 [6%]; 江龙杰 [6%]; 蓝向奔 [6%]; 黎恩恒 [6%]; 郑俊森 [6%] | 2.4h | 2.4h | 84.48 |  | 84.48 |
| 34 | 1.2.6 | **阶段评审** |  | 2d | 2018-08-04 A | 2018-08-05 A |  | 100% | 2018-08-03 | 2018-08-05 | 2d | 2018-08-04 | 2018-08-05 | 黄景祥 [25%]; 江龙杰 [25%]; 蓝向奔 [25%]; 黎恩恒 [25%]; 郑俊森 [25%] | 33.92h | 33.92h | 1,189.28 |  | 1,189.28 |
| 35 | 1.2.6.1 | 精化配置状态审计 | manual | 1d | 2018-08-04 A | 2018-08-04 A |  | 100% | 2018-08-03 | 2018-08-05 | 2d | 2018-08-04 | 2018-08-04 | 黄景祥 [25%]; 江龙杰 [25%]; 蓝向奔 [25%]; 黎恩恒 [25%]; 郑俊森 [25%] | 10h | 10h | 352 |  | 352 |
| 36 | 1.2.6.2 | **<精化阶段里程碑>** |  | 1d | 2018-08-05 A | 2018-08-05 A |  | 100% | 2018-08-03 | 2018-08-03 | 1d | 2018-08-05 | 2018-08-05 | 郑俊森 [25%] | 3.92h | 3.92h | 133.28 |  | 133.28 |
| 37 | 1.2.6.2.1 | 评审设计工件 | manual | 1d | 2018-08-05 A | 2018-08-05 A |  | 100% | 2018-08-03 | 2018-08-12 | 7d | 2018-08-05 | 2018-08-05 | 郑俊森 [12%] | 0.96h | 0.96h | 32.64 |  | 32.64 |
| 38 | 1.2.6.2.2 | 发布设计基线 | manual | 1d | 2018-08-05 A | 2018-08-05 A |  | 100% | 2018-08-03 | 2018-08-03 | 1d | 2018-08-05 | 2018-08-05 | 郑俊森 [12%] | 0.96h | 0.96h | 32.64 |  | 32.64 |
| 39 | 1.3 | **构建阶段** |  | 10d | 2018-08-06 | 2018-08-17 | 24 |  | 2018-08-06 | 2018-08-17 | 10d | 2018-08-06 | 2018-08-17 |  | 83.4h |  | 3,239.7 | 7,588 |  |
| 40 | 1.3.1 | 配置构建阶段环境 | manual | 1d | 2018-08-06 | 2018-08-06 | 24 |  | 2018-08-06 | 2018-08-06 | 1d | 2018-08-06 | 2018-08-06 | 陈凯平; 陈树沛; 吕浩泰; 吴梓铭; 张丹萍 | 6h |  | 237.6 | 28 |  |
| 41 | 1.3.2 | 单元编码 | manual | 7d | 2018-08-07 | 2018-08-15 | 40 |  | 2018-08-06 | 2018-08-12 | 6d | 2018-08-06 | 2018-08-12 | 陈凯平; 陈树沛; 吕浩泰; 吴梓铭; 张丹萍 | 42h |  | 1,663.2 | 6,192 |  |
| 42 | 1.3.3 | 系统集成 | manual | 2d | 2018-08-16 | 2018-08-17 | 40 |  | 2018-08-08 | 2018-08-17 | 8d | 2018-08-08 | 2018-08-17 | 陈树沛 [50%]; 吕浩泰 | 10h |  | 368 | 768 |  |
| 43 | 1.3.4 | 集成测试 | manual | 2d | 2018-08-16 | 2018-08-17 | 40 |  | 2018-08-10 | 2018-08-17 | 6d | 2018-08-10 | 2018-08-17 | 陈凯平; 陈树沛 [50%]; 吕浩泰; 吴梓铭; 张丹萍 | 14.4h |  | 534.4 | 600 |  |
| 44 | 1.3.5 | **阶段评审** |  | 2d | 2018-08-16 | 2018-08-17 |  |  | 2018-08-16 | 2018-08-17 | 2d | 2018-08-16 | 2018-08-17 |  | 11h |  | 436.5 |  |  |
| 45 | 1.3.5.1 | 构建配置状态审计 | manual | 1d | 2018-08-17 | 2018-08-17 |  |  | 2018-08-16 | 2018-08-17 | 2d | 2018-08-16 | 2018-08-17 | 陈树沛; 吴梓铭 | 3h |  | 100.5 |  |  |
| 46 | 1.3.5.2 | **<构建阶段里程碑>** |  | 1d | 2018-08-17 | 2018-08-17 |  |  | 2018-08-17 | 2018-08-17 | 1d | 2018-08-17 | 2018-08-17 |  | 8h |  | 336 |  |  |
| 47 | 1.3.5.2.1 | 评审构建工件 | manual | 1d | 2018-08-17 | 2018-08-17 |  |  | 2018-08-17 | 2018-08-17 | 1d | 2018-08-17 | 2018-08-17 | 陈凯平 [50%] | 4h |  | 168 |  |  |
| 48 | 1.3.5.2.2 | 发布构建基线 | manual | 1d | 2018-08-17 | 2018-08-17 |  |  | 2018-08-17 | 2018-08-17 | 1d | 2018-08-17 | 2018-08-17 | 陈凯平 [50%] | 4h |  | 168 |  |  |
| 49 | 1.4 | **产品化阶段** |  | 4d | 2018-08-20 | 2018-08-23 | 39 |  | 2018-08-20 | 2018-08-23 | 4d | 2018-08-20 | 2018-08-23 | 陈凯平 [25%]; 吴梓铭 [25%]; 陈树沛 [25%]; 张丹萍 [25%] | 101.28h |  | 3,878.76 | 900 |  |
| 50 | 1.4.1 | **产品发布** |  | 1d | 2018-08-20 | 2018-08-20 |  |  | 2018-08-20 | 2018-08-20 | 1d | 2018-08-20 | 2018-08-20 | 吴梓铭 | 7h |  | 231 | 160 |  |
| 51 | 1.4.1.1 | 编写产品说明书 | manual | 1d | 2018-08-20 | 2018-08-20 |  |  | 2018-08-20 | 2018-08-20 | 1d | 2018-08-20 | 2018-08-20 | 吴梓铭 | 6h |  | 198 | 160 |  |
| 52 | 1.4.2 | **产品部署** |  | 2d | 2018-08-21 | 2018-08-22 | 50 |  | 2018-08-21 | 2018-08-22 | 2d | 2018-08-21 | 2018-08-22 | 陈凯平 [50%]; 吴梓铭 [50%] | 26h |  | 966 | 740 |  |
| 53 | 1.4.2.1 | 配置搭建环境 | manual | 2d | 2018-08-21 | 2018-08-22 |  |  | 2018-08-21 | 2018-08-22 | 2d | 2018-08-21 | 2018-08-22 | 陈凯平 [50%]; 吴梓铭 [33%] | 6h |  | 234 | 280 |  |
| 54 | 1.4.2.2 | 运行产品 | manual | 2d | 2018-08-21 | 2018-08-22 |  |  | 2018-08-21 | 2018-08-22 | 2d | 2018-08-21 | 2018-08-22 | 陈凯平 [50%]; 吴梓铭 [33%] | 6h |  | 234 | 280 |  |
| 55 | 1.4.2.3 | 产品测试 | manual | 2d | 2018-08-21 | 2018-08-22 |  |  | 2018-08-21 | 2018-08-22 | 2d | 2018-08-21 | 2018-08-22 | 吴梓铭 [33%] | 6h |  | 198 | 180 |  |

| ID | WBS | Task | Type | Duration | Start | Finish | Predecessors | Baseline start | Baseline finish | Baseline duration | Baseline 1 start | Baseline 1 finish | Resources | Work | Cost |
| --- | --- | --- | --- | --- | --- | --- | --- | --- | --- | --- | --- | --- | --- | --- | --- |
| 56 | 1.4.3 | **阶段评审暨结项** |  | 2d | 2018-08-22 | 2018-08-23 | 52 | 2018-08-22 | 2018-08-23 | 2d | 2018-08-22 | 2018-08-23 | 陈凯平 [33%] | 11.28h | 473.76 |
| 57 | 1.4.3.1 | 配置状态审计 | manual | 1d | 2018-08-22 | 2018-08-23 |  | 2018-08-22 | 2018-08-23 | 2d | 2018-08-22 | 2018-08-23 | 陈凯平 [33%] | 6h | 252 |
| 58 | 1.4.4 | **<产品化阶段里程碑>** |  | 2d | 2018-08-22 | 2018-08-23 |  | 2018-08-22 | 2018-08-23 | 2d | 2018-08-22 | 2018-08-23 | 陈凯平; 吴梓铭 | 22h | 816 |
| 59 | 1.4.4.1 | 评审产品 | manual | 2d | 2018-08-22 | 2018-08-23 |  | 2018-08-22 | 2018-08-23 | 2d | 2018-08-22 | 2018-08-23 | 陈凯平 [33%]; 吴梓铭 [50%] | 6h | 216 |
| 60 | 1.4.5 | 结项 | manual | 2d | 2018-08-22 | 2018-08-23 |  | 2018-08-22 | 2018-08-23 | 2d | 2018-08-22 | 2018-08-23 | 陈凯平 [33%]; 陈树沛; 吕浩泰; 吴梓铭 [50%]; 张丹萍 | 29h | 1,167 |
